# Industrial Plant Expansion - Phase 2 (Demo)

Schedule from Primavera P6, 2026-01-05 to 2027-05-31, data date 2026-09-01, A marks actual dates.

## Calendars

- Site 6-Day (Mon-Sat) with holidays: Mon-Sat 08:00-12:00, 13:00-17:00; Sun off. Exceptions (off unless hours are given): 2026-01-26, 2026-03-04, 2026-04-03, 2026-08-15, 2026-10-02, 2026-10-20, 2026-11-09, 2026-12-25, 2027-01-26, 2027-03-22.
- Office 5-Day (Mon-Fri): Mon-Fri 09:00-13:00, 14:00-18:00; Sat-Sun off. Exceptions (off unless hours are given): 2026-01-26, 2026-03-04, 2026-04-03, 2026-08-15, 2026-10-02, 2026-10-20, 2026-11-09, 2026-12-25, 2027-01-26, 2027-03-22.

## Schedule

| ID | WBS | Activity | Type | Duration | Start | Finish | Predecessors | Complete | Remaining | Planned start | Planned finish | Total float | Free float | Constraint | Calendar | Discipline |
| --- | --- | --- | --- | --- | --- | --- | --- | --- | --- | --- | --- | --- | --- | --- | --- | --- |
|  | GEN | **Project Milestones** |  |  | 2026-01-05 | 2027-05-31 |  |  |  |  |  |  |  |  |  |  |
| MS-1000 |  | Notice to proceed / Project start | milestone | 0d | 2026-01-05 A | 2026-01-05 A |  | 100% |  |  |  |  |  | start on or after 2026-01-05 |  |  |
| MS-9000 |  | Plant mechanical completion | milestone | 0d | 2027-05-31 | 2027-05-31 | ADM-C1190, MPB-C1190, WHS-C1190, SUB-C1190, UTL-C1190, STP-C1190 |  |  |  |  | 0d |  |  |  |  |
|  | ADM | **Admin Building** |  |  | 2026-01-08 | 2026-10-21 |  |  |  |  |  |  |  |  |  |  |
|  | ADM.E | **Engineering** |  |  | 2026-01-08 | 2026-04-14 |  |  |  |  |  |  |  |  |  |  |
| ADM-E1010 |  | Design basis & architectural layout |  | 19d | 2026-01-08 A | 2026-02-10 A | MS-1000 | 100% |  | 2026-01-05 | 2026-01-30 |  |  |  | Office 5-Day (Mon-Fri) | Architecture |
| ADM-E1020 |  | Structural design & IFC drawings |  | 34d | 2026-01-21 A | 2026-03-20 A | ADM-E1010 SS+5d | 100% |  | 2026-01-12 | 2026-02-27 |  |  |  | Office 5-Day (Mon-Fri) | Structural |
| ADM-E1030 |  | MEP design & drawings |  | 36d | 2026-02-17 A | 2026-04-14 A | ADM-E1010 | 100% |  | 2026-02-02 | 2026-03-24 |  |  |  | Office 5-Day (Mon-Fri) | MEP |
| ADM-E1040 |  | Drawing approval by client |  | 10d | 2026-03-24 A | 2026-04-14 A | ADM-E1020, ADM-E1030 FF | 100% |  | 2026-03-11 | 2026-03-24 |  |  |  | Office 5-Day (Mon-Fri) | Architecture |
|  | ADM.P | **Procurement** |  |  | 2026-03-25 | 2026-07-31 |  |  |  |  |  |  |  |  |  |  |
| ADM-P1050 |  | Structural steel - PO placement |  | 11d | 2026-03-25 A | 2026-04-07 A | ADM-E1020 | 100% |  | 2026-02-28 | 2026-03-13 |  |  |  |  | Structural |
| ADM-P1060 |  | Structural steel - fabrication & supply to site |  | 58d | 2026-04-13 A | 2026-07-01 A | ADM-P1050 | 100% |  | 2026-03-14 | 2026-05-21 |  |  |  |  | Structural |
| ADM-P1070 |  | MEP equipment - PO placement |  | 13d | 2026-04-15 A | 2026-04-28 A | ADM-E1030 | 100% |  | 2026-03-25 | 2026-04-09 |  |  |  |  | MEP |
| ADM-P1080 |  | MEP equipment - manufacturing & delivery |  | 70d | 2026-05-04 A | 2026-07-31 A | ADM-P1070 | 100% |  | 2026-04-10 | 2026-06-30 |  |  |  |  | MEP |
|  | ADM.C | **Construction** |  |  | 2026-01-08 | 2026-10-21 |  |  |  |  |  |  |  |  |  |  |
| ADM-C1090 |  | Site mobilisation & survey |  | 5d | 2026-01-08 A | 2026-01-14 A | MS-1000 | 100% |  | 2026-01-05 | 2026-01-09 |  |  |  |  | Civil |
| ADM-C1100 |  | Excavation |  | 17d | 2026-02-04 A | 2026-02-26 A | ADM-C1090, ADM-E1020 SS+10d | 100% |  | 2026-01-23 | 2026-02-12 |  |  |  |  | Civil |
| ADM-C1110 |  | PCC & foundation concreting |  | 30d | 2026-02-14 A | 2026-03-26 A | ADM-C1100 SS+7d | 100% |  | 2026-02-02 | 2026-03-09 |  |  |  |  | Civil |
| ADM-C1120 |  | Plinth beam & backfilling |  | 20d | 2026-03-28 A | 2026-04-23 A | ADM-C1110 | 100% |  | 2026-03-10 | 2026-04-01 |  |  |  |  | Civil |
| ADM-C1130 |  | Superstructure - RCC / steel erection |  | 54d | 2026-05-01 A | 2026-07-13 A | ADM-C1120, ADM-P1060 SS+15d | 100% |  | 2026-04-02 | 2026-06-04 |  |  |  |  | Structural |
| ADM-C1150 |  | Masonry & plastering |  | 37d | 2026-05-29 A | 2026-07-11 A | ADM-C1130 SS+20d | 100% |  | 2026-04-27 | 2026-06-08 |  |  |  |  | Civil |
| ADM-C1140 |  | Roofing & cladding |  | 21d | 2026-07-13 A | 2026-08-03 A | ADM-C1130 FS-5d | 100% |  | 2026-05-30 | 2026-06-23 |  |  |  |  | Structural |
| ADM-C1160 |  | MEP installation |  | 48d | 2026-08-04 A | 2026-10-03 | ADM-C1150 SS+10d, ADM-P1080 | 42% | 28d | 2026-07-01 | 2026-08-26 | 186d | 0d |  |  | MEP |
| ADM-C1170 |  | Finishes - flooring & painting |  | 40d | 2026-08-05 A | 2026-09-28 | ADM-C1150, ADM-C1140 | 53% | 24d | 2026-06-24 | 2026-08-08 | 204d | 18d |  |  | Architecture |
| ADM-C1180 |  | Testing & commissioning |  | 14d | 2026-10-05 | 2026-10-21 | ADM-C1160, ADM-C1170 FF |  |  |  |  | 186d | 0d |  |  | MEP |
| ADM-C1190 |  | Building handover to client | milestone | 0d | 2026-10-21 | 2026-10-21 | ADM-C1180 |  |  |  |  | 186d |  |  |  | Milestone |

| ID | WBS | Activity | Type | Duration | Start | Finish | Predecessors | Complete | Remaining | Planned start | Planned finish | Total float | Free float | Calendar | Discipline |
| --- | --- | --- | --- | --- | --- | --- | --- | --- | --- | --- | --- | --- | --- | --- | --- |
|  | MPB | **Main Process Building** |  |  | 2026-01-24 | 2027-05-31 |  |  |  |  |  |  |  |  |  |
|  | MPB.E | **Engineering** |  |  | 2026-01-30 | 2026-07-15 |  |  |  |  |  |  |  |  |  |
| MPB-E1010 |  | Design basis & architectural layout |  | 32d | 2026-01-30 A | 2026-03-20 A | MS-1000 FS+10d | 100% |  | 2026-01-19 | 2026-03-05 |  |  | Office 5-Day (Mon-Fri) | Architecture |
| MPB-E1020 |  | Structural design & IFC drawings |  | 52d | 2026-02-11 A | 2026-05-04 A | MPB-E1010 SS+5d | 100% |  | 2026-01-27 | 2026-04-10 |  |  | Office 5-Day (Mon-Fri) | Structural |
| MPB-E1030 |  | MEP design & drawings |  | 67d | 2026-03-30 A | 2026-07-15 A | MPB-E1010 | 100% |  | 2026-03-06 | 2026-06-09 |  |  | Office 5-Day (Mon-Fri) | MEP |
| MPB-E1040 |  | Drawing approval by client |  | 21d | 2026-05-22 A | 2026-07-15 A | MPB-E1020, MPB-E1030 FF | 100% |  | 2026-05-12 | 2026-06-09 |  |  | Office 5-Day (Mon-Fri) | Architecture |
|  | MPB.P | **Procurement** |  |  | 2026-05-11 | 2027-02-03 |  |  |  |  |  |  |  |  |  |
| MPB-P1050 |  | Structural steel - PO placement |  | 22d | 2026-05-11 A | 2026-06-09 A | MPB-E1020 | 100% |  | 2026-04-11 | 2026-05-06 |  |  |  | Structural |
| MPB-P1060 |  | Structural steel - fabrication & supply to site |  | 99d | 2026-06-15 A | 2026-10-24 | MPB-P1050 | 55% | 45d | 2026-05-07 | 2026-08-31 | 33d |  |  | Structural |
| MPB-P1070 |  | MEP equipment - PO placement |  | 22d | 2026-07-20 A | 2026-08-13 A | MPB-E1030 | 100% |  | 2026-06-10 | 2026-07-04 |  |  |  | MEP |
| MPB-P1080 |  | MEP equipment - manufacturing & delivery |  | 124d | 2026-08-18 A | 2027-02-03 | MPB-P1070 |  | 129d | 2026-07-06 | 2026-12-01 | 0d |  |  | MEP |
|  | MPB.C | **Construction** |  |  | 2026-01-24 | 2027-05-31 |  |  |  |  |  |  |  |  |  |
| MPB-C1090 |  | Site mobilisation & survey |  | 10d | 2026-01-24 A | 2026-02-06 A | MS-1000 FS+10d | 100% |  | 2026-01-16 | 2026-01-28 |  |  |  | Civil |
| MPB-C1100 |  | Excavation |  | 32d | 2026-02-28 A | 2026-04-09 A | MPB-C1090, MPB-E1020 SS+10d | 100% |  | 2026-02-07 | 2026-03-17 |  |  |  | Civil |
| MPB-C1110 |  | PCC & foundation concreting |  | 45d | 2026-03-18 A | 2026-05-12 A | MPB-C1100 SS+7d | 100% |  | 2026-02-16 | 2026-04-10 |  |  |  | Civil |
| MPB-C1120 |  | Plinth beam & backfilling |  | 28d | 2026-05-22 A | 2026-06-26 A | MPB-C1110 | 100% |  | 2026-04-11 | 2026-05-13 |  |  |  | Civil |
| MPB-C1130 |  | Superstructure - RCC / steel erection |  | 102d | 2026-07-08 A | 2026-12-15 | MPB-C1120, MPB-P1060 SS+15d | 32% | 88d | 2026-05-25 | 2026-09-21 | 48d | 0d |  | Structural |
| MPB-C1150 |  | Masonry & plastering |  | 69d | 2026-08-06 A | 2026-10-29 | MPB-C1130 SS+20d | 29% | 49d | 2026-06-17 | 2026-09-05 | 119d | 73d |  | Civil |
| MPB-C1140 |  | Roofing & cladding |  | 39d | 2026-12-10 | 2027-01-25 | MPB-C1130 FS-5d |  |  |  |  | 48d | 0d |  | Structural |
| MPB-C1170 |  | Finishes - flooring & painting |  | 58d | 2027-01-27 | 2027-04-05 | MPB-C1150, MPB-C1140 |  |  |  |  | 48d |  |  | Architecture |
| MPB-C1160 |  | MEP installation |  | 78d | 2027-02-04 | 2027-05-06 | MPB-C1150 SS+10d, MPB-P1080 |  |  |  |  | 0d |  |  | MEP |
| MPB-C1180 |  | Testing & commissioning |  | 21d | 2027-05-07 | 2027-05-31 | MPB-C1160, MPB-C1170 FF |  |  |  |  | 0d |  |  | MEP |
| MPB-C1190 |  | Building handover to client | milestone | 0d | 2027-05-31 | 2027-05-31 | MPB-C1180 |  |  |  |  | 0d |  |  | Milestone |
|  | WHS | **Warehouse Block** |  |  | 2026-02-27 | 2027-02-05 |  |  |  |  |  |  |  |  |  |
|  | WHS.E | **Engineering** |  |  | 2026-03-06 | 2026-06-11 |  |  |  |  |  |  |  |  |  |
| WHS-E1010 |  | Design basis & architectural layout |  | 21d | 2026-03-06 A | 2026-04-08 A | MS-1000 FS+40d | 100% |  | 2026-03-03 | 2026-04-01 |  |  | Office 5-Day (Mon-Fri) | Architecture |
| WHS-E1020 |  | Structural design & IFC drawings |  | 30d | 2026-03-18 A | 2026-05-06 A | WHS-E1010 SS+5d | 100% |  | 2026-03-11 | 2026-04-22 |  |  | Office 5-Day (Mon-Fri) | Structural |
| WHS-E1030 |  | MEP design & drawings |  | 42d | 2026-04-15 A | 2026-06-11 A | WHS-E1010 | 100% |  | 2026-04-02 | 2026-06-01 |  |  | Office 5-Day (Mon-Fri) | MEP |
| WHS-E1040 |  | Drawing approval by client |  | 14d | 2026-05-15 A | 2026-06-11 A | WHS-E1020, WHS-E1030 FF | 100% |  | 2026-05-13 | 2026-06-01 |  |  | Office 5-Day (Mon-Fri) | Architecture |

| ID | WBS | Activity | Type | Duration | Start | Finish | Predecessors | Complete | Remaining | Planned start | Planned finish | Total float | Free float | Calendar | Discipline |
| --- | --- | --- | --- | --- | --- | --- | --- | --- | --- | --- | --- | --- | --- | --- | --- |
|  | WHS.P | **Procurement** |  |  | 2026-05-07 | 2026-10-30 |  |  |  |  |  |  |  |  |  |
| WHS-P1050 |  | Structural steel - PO placement |  | 13d | 2026-05-07 A | 2026-05-21 A | WHS-E1020 | 100% |  | 2026-04-23 | 2026-05-07 |  |  |  | Structural |
| WHS-P1060 |  | Structural steel - fabrication & supply to site |  | 58d | 2026-05-28 A | 2026-08-05 A | WHS-P1050 | 100% |  | 2026-05-08 | 2026-07-14 |  |  |  | Structural |
| WHS-P1070 |  | MEP equipment - PO placement |  | 18d | 2026-06-13 A | 2026-07-08 A | WHS-E1030 | 100% |  | 2026-06-02 | 2026-06-22 |  |  |  | MEP |
| WHS-P1080 |  | MEP equipment - manufacturing & delivery |  | 83d | 2026-07-09 A | 2026-10-30 | WHS-P1070 | 40% | 50d | 2026-06-23 | 2026-09-28 | 97d | 0d |  | MEP |
|  | WHS.C | **Construction** |  |  | 2026-02-27 | 2027-02-05 |  |  |  |  |  |  |  |  |  |
| WHS-C1090 |  | Site mobilisation & survey |  | 8d | 2026-02-27 A | 2026-03-09 A | MS-1000 FS+40d | 100% |  | 2026-02-21 | 2026-03-02 |  |  |  | Civil |
| WHS-C1100 |  | Excavation |  | 19d | 2026-03-30 A | 2026-04-24 A | WHS-C1090, WHS-E1020 SS+10d | 100% |  | 2026-03-23 | 2026-04-14 |  |  |  | Civil |
| WHS-C1110 |  | PCC & foundation concreting |  | 37d | 2026-04-13 A | 2026-05-25 A | WHS-C1100 SS+7d | 100% |  | 2026-03-31 | 2026-05-13 |  |  |  | Civil |
| WHS-C1120 |  | Plinth beam & backfilling |  | 20d | 2026-05-28 A | 2026-06-22 A | WHS-C1110 | 100% |  | 2026-05-14 | 2026-06-05 |  |  |  | Civil |
| WHS-C1130 |  | Superstructure - RCC / steel erection |  | 66d | 2026-06-24 A | 2026-09-10 | WHS-C1120, WHS-P1060 SS+15d | 89% | 9d | 2026-06-06 | 2026-08-22 | 117d | 0d |  | Structural |
| WHS-C1150 |  | Masonry & plastering |  | 41d | 2026-07-23 A | 2026-09-22 | WHS-C1130 SS+20d | 57% | 19d | 2026-06-30 | 2026-08-17 | 137d | 17d |  | Civil |
| WHS-C1140 |  | Roofing & cladding |  | 32d | 2026-09-05 | 2026-10-13 | WHS-C1130 FS-5d |  |  |  |  | 150d | 0d |  | Structural |
| WHS-C1170 |  | Finishes - flooring & painting |  | 42d | 2026-10-14 | 2026-12-03 | WHS-C1150, WHS-C1140 |  |  |  |  | 150d | 53d |  | Architecture |
| WHS-C1160 |  | MEP installation |  | 63d | 2026-10-31 | 2027-01-14 | WHS-C1150 SS+10d, WHS-P1080 |  |  |  |  | 97d | 0d |  | MEP |
| WHS-C1180 |  | Testing & commissioning |  | 18d | 2027-01-15 | 2027-02-05 | WHS-C1160, WHS-C1170 FF |  |  |  |  | 97d | 0d |  | MEP |
| WHS-C1190 |  | Building handover to client | milestone | 0d | 2027-02-05 | 2027-02-05 | WHS-C1180 |  |  |  |  | 97d |  |  | Milestone |
|  | SUB | **33kV Substation** |  |  | 2026-03-27 | 2027-01-14 |  |  |  |  |  |  |  |  |  |
|  | SUB.E | **Engineering** |  |  | 2026-04-10 | 2026-07-07 |  |  |  |  |  |  |  |  |  |
| SUB-E1010 |  | Design basis & architectural layout |  | 20d | 2026-04-10 A | 2026-05-13 A | MS-1000 FS+60d | 100% |  | 2026-04-01 | 2026-04-29 |  |  | Office 5-Day (Mon-Fri) | Architecture |
| SUB-E1020 |  | Structural design & IFC drawings |  | 26d | 2026-04-27 A | 2026-06-01 A | SUB-E1010 SS+5d | 100% |  | 2026-04-09 | 2026-05-14 |  |  | Office 5-Day (Mon-Fri) | Structural |
| SUB-E1030 |  | MEP design & drawings |  | 35d | 2026-05-22 A | 2026-07-07 A | SUB-E1010 | 100% |  | 2026-04-30 | 2026-06-17 |  |  | Office 5-Day (Mon-Fri) | MEP |
| SUB-E1040 |  | Drawing approval by client |  | 12d | 2026-06-12 A | 2026-07-07 A | SUB-E1020, SUB-E1030 FF | 100% |  | 2026-06-02 | 2026-06-17 |  |  | Office 5-Day (Mon-Fri) | Architecture |
|  | SUB.P | **Procurement** |  |  | 2026-06-10 | 2026-10-31 |  |  |  |  |  |  |  |  |  |
| SUB-P1050 |  | Structural steel - PO placement |  | 12d | 2026-06-10 A | 2026-06-23 A | SUB-E1020 | 100% |  | 2026-05-15 | 2026-05-28 |  |  |  | Structural |
| SUB-P1060 |  | Structural steel - fabrication & supply to site |  | 59d | 2026-07-01 A | 2026-09-17 | SUB-P1050 | 75% | 15d | 2026-05-29 | 2026-08-05 | 110d |  |  | Structural |
| SUB-P1070 |  | MEP equipment - PO placement |  | 15d | 2026-07-14 A | 2026-07-29 A | SUB-E1030 | 100% |  | 2026-06-18 | 2026-07-04 |  |  |  | MEP |
| SUB-P1080 |  | MEP equipment - manufacturing & delivery |  | 62d | 2026-08-07 A | 2026-10-31 | SUB-P1070 | 18% | 51d | 2026-07-06 | 2026-09-16 | 115d | 0d |  | MEP |

| ID | WBS | Activity | Type | Duration | Start | Finish | Predecessors | Complete | Remaining | Planned start | Planned finish | Total float | Free float | Calendar | Discipline |
| --- | --- | --- | --- | --- | --- | --- | --- | --- | --- | --- | --- | --- | --- | --- | --- |
|  | SUB.C | **Construction** |  |  | 2026-03-27 | 2027-01-14 |  |  |  |  |  |  |  |  |  |
| SUB-C1090 |  | Site mobilisation & survey |  | 5d | 2026-03-27 A | 2026-04-01 A | MS-1000 FS+60d | 100% |  | 2026-03-18 | 2026-03-23 |  |  |  | Civil |
| SUB-C1100 |  | Excavation |  | 18d | 2026-05-15 A | 2026-06-09 A | SUB-C1090, SUB-E1020 SS+10d | 100% |  | 2026-04-21 | 2026-05-11 |  |  |  | Civil |
| SUB-C1110 |  | PCC & foundation concreting |  | 29d | 2026-06-03 A | 2026-07-09 A | SUB-C1100 SS+7d | 100% |  | 2026-04-29 | 2026-06-01 |  |  |  | Civil |
| SUB-C1120 |  | Plinth beam & backfilling |  | 17d | 2026-07-21 A | 2026-08-08 A | SUB-C1110 | 100% |  | 2026-06-02 | 2026-06-20 |  |  |  | Civil |
| SUB-C1130 |  | Superstructure - RCC / steel erection |  | 53d | 2026-08-19 A | 2026-10-24 | SUB-C1120, SUB-P1060 SS+15d | 21% | 45d | 2026-06-22 | 2026-08-22 | 125d | 0d |  | Structural |
| SUB-C1150 |  | Masonry & plastering |  | 32d | 2026-09-11 | 2026-10-19 | SUB-C1130 SS+20d |  |  |  |  | 147d | 22d |  | Civil |
| SUB-C1140 |  | Roofing & cladding |  | 23d | 2026-10-19 | 2026-11-16 | SUB-C1130 FS-5d |  |  |  |  | 125d | 0d |  | Structural |
| SUB-C1160 |  | MEP installation |  | 48d | 2026-11-02 | 2026-12-29 | SUB-C1150 SS+10d, SUB-P1080 |  |  |  |  | 115d | 0d |  | MEP |
| SUB-C1170 |  | Finishes - flooring & painting |  | 40d | 2026-11-17 | 2027-01-02 | SUB-C1150, SUB-C1140 |  |  |  |  | 125d | 10d |  | Architecture |
| SUB-C1180 |  | Testing & commissioning |  | 14d | 2026-12-30 | 2027-01-14 | SUB-C1160, SUB-C1170 FF |  |  |  |  | 115d | 0d |  | MEP |
| SUB-C1190 |  | Building handover to client | milestone | 0d | 2027-01-14 | 2027-01-14 | SUB-C1180 |  |  |  |  | 115d |  |  | Milestone |
|  | UTL | **Utility Building** |  |  | 2026-04-25 | 2027-04-03 |  |  |  |  |  |  |  |  |  |
|  | UTL.E | **Engineering** |  |  | 2026-05-14 | 2026-08-12 |  |  |  |  |  |  |  |  |  |
| UTL-E1010 |  | Design basis & architectural layout |  | 24d | 2026-05-14 A | 2026-06-15 A | MS-1000 FS+90d | 100% |  | 2026-05-14 | 2026-06-16 |  |  | Office 5-Day (Mon-Fri) | Architecture |
| UTL-E1020 |  | Structural design & IFC drawings |  | 35d | 2026-05-22 A | 2026-07-16 A | UTL-E1010 SS+5d | 100% |  | 2026-05-21 | 2026-07-08 |  |  | Office 5-Day (Mon-Fri) | Structural |
| UTL-E1030 |  | MEP design & drawings |  | 38d | 2026-06-24 A | 2026-08-12 A | UTL-E1010 | 100% |  | 2026-06-17 | 2026-08-07 |  |  | Office 5-Day (Mon-Fri) | MEP |
| UTL-E1040 |  | Drawing approval by client |  | 13d | 2026-07-28 A | 2026-08-12 A | UTL-E1020, UTL-E1030 FF | 100% |  | 2026-07-22 | 2026-08-07 |  |  | Office 5-Day (Mon-Fri) | Architecture |
|  | UTL.P | **Procurement** |  |  | 2026-07-17 | 2027-01-05 |  |  |  |  |  |  |  |  |  |
| UTL-P1050 |  | Structural steel - PO placement |  | 14d | 2026-07-17 A | 2026-08-03 A | UTL-E1020 | 100% |  | 2026-07-09 | 2026-07-24 |  |  |  | Structural |
| UTL-P1060 |  | Structural steel - fabrication & supply to site |  | 61d | 2026-08-04 A | 2026-11-04 | UTL-P1050 | 11% | 54d | 2026-07-25 | 2026-10-06 | 84d |  |  | Structural |
| UTL-P1070 |  | MEP equipment - PO placement |  | 17d | 2026-08-20 A | 2026-09-14 | UTL-E1030 | 29% | 12d | 2026-08-08 | 2026-08-28 | 49d | 0d |  | MEP |
| UTL-P1080 |  | MEP equipment - manufacturing & delivery |  | 93d | 2026-09-15 | 2027-01-05 | UTL-P1070 |  |  |  |  | 49d | 0d |  | MEP |
|  | UTL.C | **Construction** |  |  | 2026-04-25 | 2027-04-03 |  |  |  |  |  |  |  |  |  |
| UTL-C1090 |  | Site mobilisation & survey |  | 7d | 2026-04-25 A | 2026-05-02 A | MS-1000 FS+90d | 100% |  | 2026-04-23 | 2026-04-30 |  |  |  | Civil |
| UTL-C1100 |  | Excavation |  | 24d | 2026-06-04 A | 2026-07-01 A | UTL-C1090, UTL-E1020 SS+10d | 100% |  | 2026-06-02 | 2026-06-29 |  |  |  | Civil |
| UTL-C1110 |  | PCC & foundation concreting |  | 30d | 2026-06-16 A | 2026-07-27 A | UTL-C1100 SS+7d | 100% |  | 2026-06-10 | 2026-07-14 |  |  |  | Civil |
| UTL-C1120 |  | Plinth beam & backfilling |  | 21d | 2026-08-03 A | 2026-08-27 A | UTL-C1110 | 100% |  | 2026-07-15 | 2026-08-07 |  |  |  | Civil |
| UTL-C1130 |  | Superstructure - RCC / steel erection |  | 69d | 2026-09-01 | 2026-11-23 | UTL-C1120, UTL-P1060 SS+15d |  |  |  |  | 99d | 0d |  | Structural |
| UTL-C1150 |  | Masonry & plastering |  | 47d | 2026-09-24 | 2026-11-20 | UTL-C1130 SS+20d |  |  |  |  | 124d | 26d |  | Civil |
| UTL-C1140 |  | Roofing & cladding |  | 29d | 2026-11-18 | 2026-12-21 | UTL-C1130 FS-5d |  |  |  |  | 99d | 0d |  | Structural |
| UTL-C1170 |  | Finishes - flooring & painting |  | 36d | 2026-12-22 | 2027-02-03 | UTL-C1150, UTL-C1140 |  |  |  |  | 99d | 50d |  | Architecture |
| UTL-C1160 |  | MEP installation |  | 59d | 2027-01-06 | 2027-03-16 | UTL-C1150 SS+10d, UTL-P1080 |  |  |  |  | 49d | 0d |  | MEP |
| UTL-C1180 |  | Testing & commissioning |  | 15d | 2027-03-17 | 2027-04-03 | UTL-C1160, UTL-C1170 FF |  |  |  |  | 49d | 0d |  | MEP |
| UTL-C1190 |  | Building handover to client | milestone | 0d | 2027-04-03 | 2027-04-03 | UTL-C1180 |  |  |  |  | 49d |  |  | Milestone |

| ID | WBS | Activity | Type | Duration | Start | Finish | Predecessors | Complete | Remaining | Planned start | Planned finish | Total float | Free float | Calendar | Discipline |
| --- | --- | --- | --- | --- | --- | --- | --- | --- | --- | --- | --- | --- | --- | --- | --- |
|  | STP | **STP & Pump House** |  |  | 2026-05-29 | 2027-02-02 |  |  |  |  |  |  |  |  |  |
|  | STP.E | **Engineering** |  |  | 2026-07-02 | 2026-09-08 |  |  |  |  |  |  |  |  |  |
| STP-E1010 |  | Design basis & architectural layout |  | 14d | 2026-07-02 A | 2026-07-23 A | MS-1000 FS+120d | 100% |  | 2026-06-25 | 2026-07-14 |  |  | Office 5-Day (Mon-Fri) | Architecture |
| STP-E1020 |  | Structural design & IFC drawings |  | 21d | 2026-07-10 A | 2026-08-11 A | STP-E1010 SS+5d | 100% |  | 2026-07-02 | 2026-07-30 |  |  | Office 5-Day (Mon-Fri) | Structural |
| STP-E1030 |  | MEP design & drawings |  | 29d | 2026-07-29 A | 2026-09-08 | STP-E1010 | 79% | 6d | 2026-07-15 | 2026-08-24 | 83d | 0d | Office 5-Day (Mon-Fri) | MEP |
| STP-E1040 |  | Drawing approval by client |  | 9d | 2026-08-12 A | 2026-09-08 | STP-E1020, STP-E1030 FF | 89% | 1d | 2026-08-12 | 2026-08-24 | 183d |  | Office 5-Day (Mon-Fri) | Architecture |
|  | STP.P | **Procurement** |  |  | 2026-08-14 | 2026-11-28 |  |  |  |  |  |  |  |  |  |
| STP-P1050 |  | Structural steel - PO placement |  | 9d | 2026-08-14 A | 2026-08-25 A | STP-E1020 | 100% |  | 2026-07-31 | 2026-08-10 |  |  |  | Structural |
| STP-P1060 |  | Structural steel - fabrication & supply to site |  | 40d | 2026-08-29 A | 2026-10-21 | STP-P1050 |  | 42d | 2026-08-11 | 2026-09-26 | 125d |  |  | Structural |
| STP-P1070 |  | MEP equipment - PO placement |  | 11d | 2026-09-09 | 2026-09-21 | STP-E1030 |  |  |  |  | 100d | 0d |  | MEP |
| STP-P1080 |  | MEP equipment - manufacturing & delivery |  | 56d | 2026-09-22 | 2026-11-28 | STP-P1070 |  |  |  |  | 100d | 0d |  | MEP |
|  | STP.C | **Construction** |  |  | 2026-05-29 | 2027-02-02 |  |  |  |  |  |  |  |  |  |
| STP-C1090 |  | Site mobilisation & survey |  | 5d | 2026-05-29 A | 2026-06-03 A | MS-1000 FS+120d | 100% |  | 2026-05-28 | 2026-06-02 |  |  |  | Civil |
| STP-C1100 |  | Excavation |  | 15d | 2026-07-24 A | 2026-08-10 A | STP-C1090, STP-E1020 SS+10d | 100% |  | 2026-07-14 | 2026-07-30 |  |  |  | Civil |
| STP-C1110 |  | PCC & foundation concreting |  | 28d | 2026-08-06 A | 2026-09-17 | STP-C1100 SS+7d | 58% | 15d | 2026-07-22 | 2026-08-24 | 110d | 0d |  | Civil |
| STP-C1150 |  | Masonry & plastering |  | 33d | 2026-08-26 A | 2026-12-07 | STP-C1130 SS+20d | 5% | 31d | 2026-10-06 | 2026-11-14 | 114d | 7d |  | Civil |
| STP-C1160 |  | MEP installation |  | 43d | 2026-08-26 A | 2027-01-16 | STP-C1150 SS+10d, STP-P1080 | 5% | 41d | 2026-11-14 | 2027-01-04 | 100d | 0d |  | MEP |
| STP-C1120 |  | Plinth beam & backfilling |  | 15d | 2026-09-18 | 2026-10-06 | STP-C1110 |  |  |  |  | 110d | 0d |  | Civil |
| STP-C1130 |  | Superstructure - RCC / steel erection |  | 43d | 2026-10-07 | 2026-11-27 | STP-C1120, STP-P1060 SS+15d |  |  |  |  | 110d | 0d |  | Structural |
| STP-C1140 |  | Roofing & cladding |  | 20d | 2026-11-23 | 2026-12-15 | STP-C1130 FS-5d |  |  |  |  | 110d | 0d |  | Structural |
| STP-C1170 |  | Finishes - flooring & painting |  | 30d | 2026-12-16 | 2027-01-20 | STP-C1150, STP-C1140 |  |  |  |  | 110d | 10d |  | Architecture |
| STP-C1180 |  | Testing & commissioning |  | 13d | 2027-01-18 | 2027-02-02 | STP-C1160, STP-C1170 FF |  |  |  |  | 100d | 0d |  | MEP |
| STP-C1190 |  | Building handover to client | milestone | 0d | 2027-02-02 | 2027-02-02 | STP-C1180 |  |  |  |  | 100d |  |  | Milestone |
